# 二期非车需求

Schedule from a web Gantt chart, 2025-04-15 to 2025-06-27.
Saturdays and Sundays are off

## Schedule

| ID | WBS | Task | Duration | Start | Finish | Complete | Status |
| --- | --- | --- | --- | --- | --- | --- | --- |
| 2 | 1 | 需求收集 | 14d | 2025-04-15 | 2025-05-02 | 30% |  |
| 3 | 2 | 原型设计 | 14d | 2025-04-15 | 2025-05-02 |  | waiting |
| 4 | 3 | 接口功能拆分设计 | 10d | 2025-04-21 | 2025-05-02 |  | waiting |
| 5 | 4 | 确定所需周边系统 | 5d | 2025-04-28 | 2025-05-02 |  | waiting |
| 6 | 5 | 安全测试 | 5d | 2025-06-16 | 2025-06-20 |  | waiting |
| 7 | 6 | 性能测试 | 5d | 2025-06-16 | 2025-06-20 |  |  |
| 8 | 7 | 预上线 | 5d | 2025-06-23 | 2025-06-27 |  | waiting |
| 9 | 8 | 功能测试 | 1d | 2025-04-15 | 2025-04-15 |  |  |
